Schedule from MS Project XML, 2017-06-01 to 2017-06-30.

## Calendars

- Standard: Mon-Fri 08:00-12:00, 13:00-17:00; Sat-Sun off.

## Resources

| Resource |
| --- |
| 郭茜 |
| 王琛 |
| 白凯 |
| 赵一鸣 |
| 虞里杉 |
| 刘旭 |
| 柴宗三 |
| 袁伟明 |
| 柴宗三 |
| 江彤 |
| 敬晓阳 |
| 张宁 |
| 贾双喜 |
| 现场研发1 |
| 现场研发2 |
| 现场研发3 |
| 现场研发4 |

## Schedule

| ID | WBS | Task | Duration | Start | Finish | Predecessors | Baseline start | Baseline finish | Baseline duration | Constraint | Resources | Work |
| --- | --- | --- | --- | --- | --- | --- | --- | --- | --- | --- | --- | --- |
| 1 | 1 | **前端开发－橘云多租户管理平台** | 22d | 2017-06-01 | 2017-06-30 |  | 2017-06-01 | 2017-06-28 | 20d | start no earlier than 2017-06-01 |  | 672h |
| 2 | 1.1 | **单点登录功能开发** | 7d | 2017-06-01 | 2017-06-09 |  | 2017-06-01 | 2017-06-07 | 5d | start no earlier than 2017-05-25 |  | 56h |
| 3 | 1.1.1 | 调用中信云用户中心登录认证接口 | 2d | 2017-06-01 | 2017-06-02 |  |  |  |  | start no earlier than 2017-05-26 | 江彤 | 16h |
| 4 | 1.1.2 | 信云智控制台跳转到统一管控界面 | 1d | 2017-06-05 | 2017-06-05 | 3 |  |  |  | start no earlier than 2017-05-26 | 江彤 | 8h |
| 5 | 1.1.3 | 橘云多租户管理从统一管控平台无密码登录 | 2d | 2017-06-06 | 2017-06-07 | 4 |  |  |  | start no earlier than 2017-05-26 | 江彤 | 16h |
| 6 | 1.1.4 | 橘云Ambari运维平台从统一管控页面无密码登录 | 2d | 2017-06-08 | 2017-06-09 | 5 |  |  |  | start no earlier than 2017-05-26 | 江彤 | 16h |
| 7 | 1.2 | **租户管理页面框架开发** | 10d | 2017-06-01 | 2017-06-14 |  | 2017-06-01 | 2017-06-14 | 10d | start no earlier than 2017-05-25 |  | 80h |
| 8 | 1.2.1 | 租户管理页面顶级导航栏功能开发 | 4d | 2017-06-01 | 2017-06-06 |  |  |  |  | start no earlier than 2017-05-26 | 虞里杉 | 32h |
| 9 | 1.2.2 | 租户管理页面前端开发框架准备 | 2d | 2017-06-07 | 2017-06-08 | 8 |  |  |  | start no earlier than 2017-05-26 | 虞里杉 | 16h |
| 10 | 1.2.3 | 登录页面开发 | 3d | 2017-06-09 | 2017-06-13 | 9 |  |  |  | start no earlier than 2017-05-26 | 虞里杉 | 24h |
| 11 | 1.2.4 | 与单点登录服务的集成 | 1d | 2017-06-14 | 2017-06-14 | 10 |  |  |  | start no earlier than 2017-05-26 | 虞里杉 | 8h |
| 12 | 1.3 | **统一管控平台开发** | 15d | 2017-06-01 | 2017-06-21 |  | 2017-06-01 | 2017-06-21 | 15d | start no earlier than 2017-05-25 |  | 120h |
| 13 | 1.3.1 | 统一管控平台页面设计 | 3d | 2017-06-01 | 2017-06-05 |  |  |  |  | start no earlier than 2017-05-26 | 敬晓阳 | 24h |
| 14 | 1.3.2 | 统一管控平台页面开发 | 4d | 2017-06-06 | 2017-06-09 | 13 |  |  |  | start no earlier than 2017-05-26 | 敬晓阳 | 32h |
| 15 | 1.3.3 | 多租户平台管理页面接入 | 2d | 2017-06-12 | 2017-06-13 | 14 |  |  |  | start no earlier than 2017-05-26 | 敬晓阳 | 16h |
| 16 | 1.3.4 | 运维管理平台页面接入 | 1d | 2017-06-14 | 2017-06-14 | 15 |  |  |  | start no earlier than 2017-05-26 | 敬晓阳 | 8h |
| 17 | 1.3.5 | 第三方服务运维平台梳理 | 2d | 2017-06-15 | 2017-06-16 | 16 |  |  |  | start no earlier than 2017-05-26 | 敬晓阳 | 16h |
| 18 | 1.3.6 | 第三方服务运维平台接入 | 3d | 2017-06-19 | 2017-06-21 | 17 |  |  |  | start no earlier than 2017-05-26 | 敬晓阳 | 24h |
| 19 | 1.4 | **租户资源使用情况监控页面开发** | 15d | 2017-06-12 | 2017-06-30 | 2 | 2017-06-08 | 2017-06-28 | 15d | start no earlier than 2017-05-25 |  | 120h |
| 20 | 1.4.1 | 租户级的HDFS资源使用信息获取 | 2d | 2017-06-12 | 2017-06-13 |  |  |  |  | start no earlier than 2017-05-26 | 江彤 | 16h |
| 21 | 1.4.2 | 租户级的YARN资源使用信息获取 | 1d | 2017-06-14 | 2017-06-14 | 20 |  |  |  | start no earlier than 2017-05-26 | 江彤 | 8h |
| 22 | 1.4.3 | 租户级的Hive资源使用信息获取 | 2d | 2017-06-15 | 2017-06-16 | 21 |  |  |  | start no earlier than 2017-05-26 | 江彤 | 16h |
| 23 | 1.4.4 | 租户级的HBase资源使用信息获取 | 1d | 2017-06-19 | 2017-06-19 | 22 |  |  |  | start no earlier than 2017-05-26 | 江彤 | 8h |
| 24 | 1.4.5 | 租户级的Kafka资源使用信息获取 | 2d | 2017-06-20 | 2017-06-21 | 23 |  |  |  | start no earlier than 2017-05-26 | 江彤 | 16h |
| 25 | 1.4.6 | 租户级的Oracle资源使用信息获取 | 1d | 2017-06-22 | 2017-06-22 | 24 |  |  |  | start no earlier than 2017-05-26 | 江彤 | 8h |
| 26 | 1.4.7 | 租户级的GreenPlum 资源使用信息获取 | 2d | 2017-06-23 | 2017-06-26 | 25 |  |  |  | start no earlier than 2017-05-26 | 江彤 | 16h |
| 27 | 1.4.8 | 租户级的MongoDB资源使用信息获取 | 1d | 2017-06-27 | 2017-06-27 | 26 |  |  |  | start no earlier than 2017-05-26 | 江彤 | 8h |
| 28 | 1.4.9 | 租户级的Neo4j资源使用信息获取 | 2d | 2017-06-28 | 2017-06-29 | 27 |  |  |  | start no earlier than 2017-05-26 | 江彤 | 16h |
| 29 | 1.4.10 | 租户级的RabbitMQ资源使用信息获取 | 1d | 2017-06-30 | 2017-06-30 | 28 |  |  |  | start no earlier than 2017-05-26 | 江彤 | 8h |

| ID | WBS | Task | Duration | Start | Finish | Predecessors | Baseline start | Baseline finish | Baseline duration | Constraint | Resources | Work |
| --- | --- | --- | --- | --- | --- | --- | --- | --- | --- | --- | --- | --- |
| 30 | 1.5 | **租户角色管理，分配页面开发** | 10d | 2017-06-01 | 2017-06-14 |  | 2017-06-01 | 2017-06-14 | 10d | start no earlier than 2017-05-25 |  | 80h |
| 31 | 1.5.1 | 租户用户列表页面开发 | 4d | 2017-06-01 | 2017-06-06 |  |  |  |  | start no earlier than 2017-05-26 | 张宁 | 32h |
| 32 | 1.5.2 | 租户授权页面开发 | 4d | 2017-06-07 | 2017-06-12 | 31 |  |  |  | start no earlier than 2017-05-26 | 张宁 | 32h |
| 33 | 1.5.3 | 租户授权时获取云用户中心用户列表功能开发 | 2d | 2017-06-13 | 2017-06-14 | 32 |  |  |  | start no earlier than 2017-05-26 | 张宁 | 16h |
| 34 | 1.6 | **租户基本信息页面开发** | 6d | 2017-06-22 | 2017-06-29 | 12 | 2017-06-22 | 2017-06-28 | 5d | start no earlier than 2017-05-25 |  | 48h |
| 35 | 1.6.1 | 租户基本信息展示 | 3d | 2017-06-22 | 2017-06-26 |  |  |  |  | start no earlier than 2017-05-26 | 敬晓阳 | 24h |
| 36 | 1.6.2 | 租户包涵的服务展示 | 3d | 2017-06-27 | 2017-06-29 | 35 |  |  |  | start no earlier than 2017-05-26 | 敬晓阳 | 24h |
| 37 | 1.7 | **服务管理页面开发** | 16d | 2017-06-01 | 2017-06-22 |  | 2017-06-01 | 2017-06-21 | 15d | start no earlier than 2017-05-25 |  | 128h |
| 38 | 1.7.1 | 服务列表页面开发 | 4d | 2017-06-01 | 2017-06-06 |  |  |  |  | start no earlier than 2017-05-26 | 贾双喜 | 32h |
| 39 | 1.7.2 | 服务列表页面与后端集成 | 1d | 2017-06-07 | 2017-06-07 | 38 |  |  |  | start no earlier than 2017-05-26 | 贾双喜 | 8h |
| 40 | 1.7.3 | 服务添加页面框架开发 | 1d | 2017-06-08 | 2017-06-08 | 39 |  |  |  | start no earlier than 2017-05-26 | 贾双喜 | 8h |
| 41 | 1.7.4 | HDFS服务添加页面增强 | 1d | 2017-06-09 | 2017-06-09 | 40 |  |  |  | start no earlier than 2017-05-26 | 贾双喜 | 8h |
| 42 | 1.7.5 | YARN服务添加页面增强 | 1d | 2017-06-12 | 2017-06-12 | 41 |  |  |  | start no earlier than 2017-05-26 | 贾双喜 | 8h |
| 43 | 1.7.6 | Hive服务添加页面增强 | 1d | 2017-06-13 | 2017-06-13 | 42 |  |  |  | start no earlier than 2017-05-26 | 贾双喜 | 8h |
| 44 | 1.7.7 | HBase服务添加页面增强 | 1d | 2017-06-14 | 2017-06-14 | 43 |  |  |  | start no earlier than 2017-05-26 | 贾双喜 | 8h |
| 45 | 1.7.8 | Kafka服务添加页面增强 | 1d | 2017-06-15 | 2017-06-15 | 44 |  |  |  | start no earlier than 2017-05-26 | 贾双喜 | 8h |
| 46 | 1.7.9 | Oracle服务添加页面增强 | 1d | 2017-06-16 | 2017-06-16 | 45 |  |  |  | start no earlier than 2017-05-26 | 贾双喜 | 8h |
| 47 | 1.7.10 | GreenPlum服务添加页面增强 | 1d | 2017-06-19 | 2017-06-19 | 46 |  |  |  | start no earlier than 2017-05-26 | 贾双喜 | 8h |
| 48 | 1.7.11 | MongoDB服务添加页面增强 | 1d | 2017-06-20 | 2017-06-20 | 47 |  |  |  | start no earlier than 2017-05-26 | 贾双喜 | 8h |
| 49 | 1.7.12 | Neo4j服务添加页面增强 | 1d | 2017-06-21 | 2017-06-21 | 48 |  |  |  | start no earlier than 2017-05-26 | 贾双喜 | 8h |
| 50 | 1.7.13 | RabbitMQ服务添加页面增强 | 1d | 2017-06-22 | 2017-06-22 | 49 |  |  |  | start no earlier than 2017-05-26 | 贾双喜 | 8h |
| 51 | 1.8 | **角色管理页面开发** | 5d | 2017-06-23 | 2017-06-29 | 37 | 2017-06-22 | 2017-06-28 | 5d | start no earlier than 2017-05-25 |  | 40h |
| 52 | 1.8.1 | 角色列表页面开发 | 3d | 2017-06-23 | 2017-06-27 |  |  |  |  | start no earlier than 2017-05-26 | 贾双喜 | 24h |
| 53 | 1.8.2 | 角色列表获取API调用 | 2d | 2017-06-28 | 2017-06-29 | 52 |  |  |  | start no earlier than 2017-05-26 | 贾双喜 | 16h |

| ID | WBS | Task | Duration | Start | Finish | Predecessors | Baseline start | Baseline finish | Baseline duration | Constraint | Resources | Work |
| --- | --- | --- | --- | --- | --- | --- | --- | --- | --- | --- | --- | --- |
| 54 | 2 | **服务端开发－橘云多租户管理平台** | 20d | 2017-06-01 | 2017-06-28 |  | 2017-06-01 | 2017-06-28 | 20d | start no earlier than 2017-06-01 |  | 360h |
| 55 | 2.1 | **服务管理功能开发** | 10d | 2017-06-01 | 2017-06-14 |  | 2017-06-01 | 2017-06-14 | 10d | start no earlier than 2017-05-25 |  | 80h |
| 56 | 2.1.1 | 服务和服务实例接口定义 | 2d | 2017-06-01 | 2017-06-02 |  |  |  |  | start no earlier than 2017-05-26 | 白凯 | 16h |
| 57 | 2.1.2 | 服务和服务实例接口开发 | 1d | 2017-06-05 | 2017-06-05 | 56 |  |  |  | start no earlier than 2017-05-26 | 白凯 | 8h |
| 58 | 2.1.3 | 服务管理功能开发 | 3d | 2017-06-06 | 2017-06-08 | 57 |  |  |  | start no earlier than 2017-05-26 | 白凯 | 24h |
| 59 | 2.1.4 | 服务实例管理功能开发 | 4d | 2017-06-09 | 2017-06-14 | 58 |  |  |  | start no earlier than 2017-05-26 | 白凯 | 32h |
| 60 | 2.2 | **权限管理功能开发** | 10d | 2017-06-01 | 2017-06-14 |  | 2017-06-15 | 2017-06-28 | 10d | start no earlier than 2017-05-25 |  | 80h |
| 61 | 2.2.1 | 三种角色控制框架设计 | 3d | 2017-06-01 | 2017-06-05 |  |  |  |  | start no earlier than 2017-05-26 | 现场研发2 | 24h |
| 62 | 2.2.2 | 系统管理员权限控制功能开发 | 3d | 2017-06-06 | 2017-06-08 | 61 |  |  |  | start no earlier than 2017-05-26 | 现场研发2 | 24h |
| 63 | 2.2.3 | 项目管理员权限控制功能开发 | 2d | 2017-06-09 | 2017-06-12 | 62 |  |  |  | start no earlier than 2017-05-26 | 现场研发2 | 16h |
| 64 | 2.2.4 | 普通用户权限控制功能开发 | 2d | 2017-06-13 | 2017-06-14 | 63 |  |  |  | start no earlier than 2017-05-26 | 现场研发2 | 16h |
| 65 | 2.3 | **租户管理功能开发** | 15d | 2017-06-01 | 2017-06-21 |  | 2017-06-01 | 2017-06-21 | 15d | start no earlier than 2017-05-25 |  | 120h |
| 66 | 2.3.1 | 租户接口设计 | 3d | 2017-06-01 | 2017-06-05 |  |  |  |  | start no earlier than 2017-05-26 | 赵一鸣 | 24h |
| 67 | 2.3.2 | 租户接口实现 | 3d | 2017-06-06 | 2017-06-08 | 66 |  |  |  | start no earlier than 2017-05-26 | 赵一鸣 | 24h |
| 68 | 2.3.3 | 租户查询 | 1d | 2017-06-09 | 2017-06-09 | 67 |  |  |  | start no earlier than 2017-05-26 | 赵一鸣 | 8h |
| 69 | 2.3.4 | 租户创建 | 4d | 2017-06-12 | 2017-06-15 | 68 |  |  |  | start no earlier than 2017-05-26 | 赵一鸣 | 32h |
| 70 | 2.3.5 | 租户修改 | 4d | 2017-06-16 | 2017-06-21 | 69 |  |  |  | start no earlier than 2017-05-26 | 赵一鸣 | 32h |
| 71 | 2.4 | **服务端配置管理，框架开发** | 10d | 2017-06-15 | 2017-06-28 | 7 | 2017-06-15 | 2017-06-28 | 10d | start no earlier than 2017-05-25 |  | 80h |
| 72 | 2.4.1 | 服务端Web服务器准备 | 3d | 2017-06-15 | 2017-06-19 |  |  |  |  | start no earlier than 2017-05-26 | 虞里杉 | 24h |
| 73 | 2.4.2 | 服务端开发框架准备 | 4d | 2017-06-20 | 2017-06-23 | 72 |  |  |  | start no earlier than 2017-05-26 | 虞里杉 | 32h |
| 74 | 2.4.3 | 服务端代码组织结构设计 | 3d | 2017-06-26 | 2017-06-28 | 73 |  |  |  | start no earlier than 2017-05-26 | 虞里杉 | 24h |
| 75 | 3 | **服务适配器开发** | 20d | 2017-06-01 | 2017-06-28 |  | 2017-06-01 | 2017-06-28 | 20d |  |  | 1200h |
| 76 | 3.1 | **HDFS服务及服务实例开发** | 10d | 2017-06-01 | 2017-06-14 |  | 2017-06-01 | 2017-06-14 | 10d | start no earlier than 2017-06-01 |  | 80h |
| 77 | 3.1.1 | HDFS服务功能开发 | 4d | 2017-06-01 | 2017-06-06 |  |  |  |  | start no earlier than 2017-05-26 | 郭茜 | 32h |
| 78 | 3.1.2 | HDFS服务实例功能开发 | 4d | 2017-06-07 | 2017-06-12 | 77 |  |  |  | start no earlier than 2017-05-26 | 郭茜 | 32h |
| 79 | 3.1.3 | HDFS服务REST API实现 | 2d | 2017-06-13 | 2017-06-14 | 78 |  |  |  | start no earlier than 2017-05-26 | 郭茜 | 16h |

| ID | WBS | Task | Duration | Start | Finish | Predecessors | Baseline start | Baseline finish | Baseline duration | Constraint | Resources | Work |
| --- | --- | --- | --- | --- | --- | --- | --- | --- | --- | --- | --- | --- |
| 80 | 3.2 | **YARN服务及服务实例开发** | 10d | 2017-06-15 | 2017-06-28 | 76 | 2017-06-15 | 2017-06-28 | 10d | start no earlier than 2017-06-01 |  | 80h |
| 81 | 3.2.1 | YARN服务功能开发 | 4d | 2017-06-15 | 2017-06-20 |  |  |  |  | start no earlier than 2017-05-26 | 郭茜 | 32h |
| 82 | 3.2.2 | YARN服务实例功能开发 | 4d | 2017-06-21 | 2017-06-26 | 81 |  |  |  | start no earlier than 2017-05-26 | 郭茜 | 32h |
| 83 | 3.2.3 | YARN服务REST API实现 | 2d | 2017-06-27 | 2017-06-28 | 82 |  |  |  | start no earlier than 2017-05-26 | 郭茜 | 16h |
| 84 | 3.3 | **HBase服务及服务实例开发** | 10d | 2017-06-01 | 2017-06-14 |  | 2017-06-01 | 2017-06-14 | 10d | start no earlier than 2017-06-01 |  | 80h |
| 85 | 3.3.1 | HBase服务功能开发 | 4d | 2017-06-01 | 2017-06-06 |  |  |  |  | start no earlier than 2017-05-26 | 王琛 | 32h |
| 86 | 3.3.2 | HBase服务实例功能开发 | 4d | 2017-06-07 | 2017-06-12 | 85 |  |  |  | start no earlier than 2017-05-26 | 王琛 | 32h |
| 87 | 3.3.3 | HBase服务REST API开发 | 2d | 2017-06-13 | 2017-06-14 | 86 |  |  |  | start no earlier than 2017-05-26 | 王琛 | 16h |
| 88 | 3.4 | **Hive服务及服务实例开发** | 10d | 2017-06-15 | 2017-06-28 | 84 | 2017-06-15 | 2017-06-28 | 10d | start no earlier than 2017-06-01 |  | 80h |
| 89 | 3.4.1 | Hive服务功能开发 | 4d | 2017-06-15 | 2017-06-20 |  |  |  |  | start no earlier than 2017-05-26 | 王琛 | 32h |
| 90 | 3.4.2 | Hive服务实例功能开发 | 4d | 2017-06-21 | 2017-06-26 | 89 |  |  |  | start no earlier than 2017-05-26 | 王琛 | 32h |
| 91 | 3.4.3 | Hive服务REST API实现 | 2d | 2017-06-27 | 2017-06-28 | 90 |  |  |  | start no earlier than 2017-05-26 | 王琛 | 16h |
| 92 | 3.5 | **Kafka服务及服务实例开发** | 10d | 2017-06-15 | 2017-06-28 | 55 | 2017-06-15 | 2017-06-28 | 10d | start no earlier than 2017-06-01 |  | 80h |
| 93 | 3.5.1 | Kafka服务功能开发 | 4d | 2017-06-15 | 2017-06-20 |  |  |  |  | start no earlier than 2017-05-26 | 白凯 | 32h |
| 94 | 3.5.2 | Kafka服务实例功能开发 | 4d | 2017-06-21 | 2017-06-26 | 93 |  |  |  | start no earlier than 2017-05-26 | 白凯 | 32h |
| 95 | 3.5.3 | Kafka服务REST API实现 | 2d | 2017-06-27 | 2017-06-28 | 94 |  |  |  | start no earlier than 2017-05-26 | 白凯 | 16h |
| 96 | 3.6 | **Oracle服务及服务实例开发** | 20d | 2017-06-01 | 2017-06-28 |  | 2017-06-01 | 2017-06-28 | 20d | start no earlier than 2017-06-01 |  | 160h |
| 97 | 3.6.1 | Oracle服务功能调研 | 4d | 2017-06-01 | 2017-06-06 |  |  |  |  | start no earlier than 2017-05-26 | 现场研发1 | 32h |
| 98 | 3.6.2 | Oracle服务实例功能调研 | 4d | 2017-06-07 | 2017-06-12 | 97 |  |  |  | start no earlier than 2017-05-26 | 现场研发1 | 32h |
| 99 | 3.6.3 | Oracle服务功能开发 | 4d | 2017-06-13 | 2017-06-16 | 98 |  |  |  | start no earlier than 2017-05-26 | 现场研发1 | 32h |
| 100 | 3.6.4 | Oracle服务实例功能开发 | 4d | 2017-06-19 | 2017-06-22 | 99 |  |  |  | start no earlier than 2017-05-26 | 现场研发1 | 32h |
| 101 | 3.6.5 | Oracle服务REST API实现 | 2d | 2017-06-23 | 2017-06-26 | 100 |  |  |  | start no earlier than 2017-05-26 | 现场研发1 | 16h |
| 102 | 3.6.6 | Oracle服务功能集成 | 2d | 2017-06-27 | 2017-06-28 | 101 |  |  |  | start no earlier than 2017-05-26 | 现场研发1 | 16h |
| 103 | 3.7 | **GreenPlum 服务及服务实例开发** | 20d | 2017-06-01 | 2017-06-28 |  | 2017-06-01 | 2017-06-28 | 20d | start no earlier than 2017-06-01 |  | 160h |
| 104 | 3.7.1 | GreenPlum服务功能调研 | 4d | 2017-06-01 | 2017-06-06 |  |  |  |  | start no earlier than 2017-05-26 | 袁伟明 | 32h |
| 105 | 3.7.2 | GreenPlum 服务实例功能调研 | 4d | 2017-06-07 | 2017-06-12 | 104 |  |  |  | start no earlier than 2017-05-26 | 袁伟明 | 32h |
| 106 | 3.7.3 | GreenPlum服务功能开发 | 4d | 2017-06-13 | 2017-06-16 | 105 |  |  |  | start no earlier than 2017-05-26 | 袁伟明 | 32h |
| 107 | 3.7.4 | GreenPlum 服务实例功能开发 | 4d | 2017-06-19 | 2017-06-22 | 106 |  |  |  | start no earlier than 2017-05-26 | 袁伟明 | 32h |
| 108 | 3.7.5 | GreenPlum 服务REST API实现 | 2d | 2017-06-23 | 2017-06-26 | 107 |  |  |  | start no earlier than 2017-05-26 | 袁伟明 | 16h |
| 109 | 3.7.6 | GreenPlum服务功能集成 | 2d | 2017-06-27 | 2017-06-28 | 108 |  |  |  | start no earlier than 2017-05-26 | 袁伟明 | 16h |

| ID | WBS | Task | Duration | Start | Finish | Predecessors | Baseline start | Baseline finish | Baseline duration | Constraint | Resources | Work |
| --- | --- | --- | --- | --- | --- | --- | --- | --- | --- | --- | --- | --- |
| 110 | 3.8 | **MongoDB服务及服务实例开发** | 20d | 2017-06-01 | 2017-06-28 |  | 2017-06-01 | 2017-06-28 | 20d | start no earlier than 2017-06-01 |  | 160h |
| 111 | 3.8.1 | MongoDB服务功能调研 | 4d | 2017-06-01 | 2017-06-06 |  |  |  |  | start no earlier than 2017-05-26 | 柴宗三 | 32h |
| 112 | 3.8.2 | MongoDB服务实例功能调研 | 4d | 2017-06-07 | 2017-06-12 | 111 |  |  |  | start no earlier than 2017-05-26 | 柴宗三 | 32h |
| 113 | 3.8.3 | MongoDB服务功能开发 | 4d | 2017-06-13 | 2017-06-16 | 112 |  |  |  | start no earlier than 2017-05-26 | 柴宗三 | 32h |
| 114 | 3.8.4 | MongoDB服务实例功能开发 | 4d | 2017-06-19 | 2017-06-22 | 113 |  |  |  | start no earlier than 2017-05-26 | 柴宗三 | 32h |
| 115 | 3.8.5 | MongoDB服务REST API实现 | 2d | 2017-06-23 | 2017-06-26 | 114 |  |  |  | start no earlier than 2017-05-26 | 柴宗三 | 16h |
| 116 | 3.8.6 | MongoDB服务功能集成 | 2d | 2017-06-27 | 2017-06-28 | 115 |  |  |  | start no earlier than 2017-05-26 | 柴宗三 | 16h |
| 117 | 3.9 | **Neo4j服务及服务实例开发** | 20d | 2017-06-01 | 2017-06-28 |  | 2017-06-01 | 2017-06-28 | 20d | start no earlier than 2017-06-01 |  | 160h |
| 118 | 3.9.1 | Neo4j服务功能调研 | 4d | 2017-06-01 | 2017-06-06 |  |  |  |  | start no earlier than 2017-05-26 | 刘旭 | 32h |
| 119 | 3.9.2 | Neo4j服务实例功能调研 | 4d | 2017-06-07 | 2017-06-12 | 118 |  |  |  | start no earlier than 2017-05-26 | 刘旭 | 32h |
| 120 | 3.9.3 | Neo4j服务功能开发 | 4d | 2017-06-13 | 2017-06-16 | 119 |  |  |  | start no earlier than 2017-05-26 | 刘旭 | 32h |
| 121 | 3.9.4 | Neo4j服务实例功能开发 | 4d | 2017-06-19 | 2017-06-22 | 120 |  |  |  | start no earlier than 2017-05-26 | 刘旭 | 32h |
| 122 | 3.9.5 | Neo4j服务REST API实现 | 2d | 2017-06-23 | 2017-06-26 | 121 |  |  |  | start no earlier than 2017-05-26 | 刘旭 | 16h |
| 123 | 3.9.6 | Neo4j服务功能集成 | 2d | 2017-06-27 | 2017-06-28 | 122 |  |  |  | start no earlier than 2017-05-26 | 刘旭 | 16h |
| 124 | 3.10 | **RabbitMQ服务及服务实例开发** | 20d | 2017-06-01 | 2017-06-28 |  | 2017-06-01 | 2017-06-28 | 20d | start no earlier than 2017-06-01 |  | 160h |
| 125 | 3.10.1 | RabbitMQ服务功能调研 | 4d | 2017-06-01 | 2017-06-06 |  |  |  |  | start no earlier than 2017-05-26 | 柴宗三 | 32h |
| 126 | 3.10.2 | RabbitMQ服务实例功能调研 | 4d | 2017-06-07 | 2017-06-12 | 125 |  |  |  | start no earlier than 2017-05-26 | 柴宗三 | 32h |
| 127 | 3.10.3 | RabbitMQ服务功能开发 | 4d | 2017-06-13 | 2017-06-16 | 126 |  |  |  | start no earlier than 2017-05-26 | 柴宗三 | 32h |
| 128 | 3.10.4 | RabbitMQ服务实例功能开发 | 4d | 2017-06-19 | 2017-06-22 | 127 |  |  |  | start no earlier than 2017-05-26 | 柴宗三 | 32h |
| 129 | 3.10.5 | RabbitMQ服务RSET API实现 | 2d | 2017-06-23 | 2017-06-26 | 128 |  |  |  | start no earlier than 2017-05-26 | 柴宗三 | 16h |
| 130 | 3.10.6 | RabbitMQ服务功能集成 | 2d | 2017-06-27 | 2017-06-28 | 129 |  |  |  | start no earlier than 2017-05-26 | 柴宗三 | 16h |
| 131 | 4 | **与DACP调用接口开发** | 5d | 2017-06-01 | 2017-06-07 |  | 2017-06-01 | 2017-06-07 | 5d | start no earlier than 2017-06-01 |  | 40h |
| 132 | 4.1 | 与DACP调用接口沟通 | 1d | 2017-06-01 | 2017-06-01 |  |  |  |  | start no earlier than 2017-05-26 | 现场研发3 | 8h |
| 133 | 4.2 | DACP接口调用 | 4d | 2017-06-02 | 2017-06-07 | 132 |  |  |  | start no earlier than 2017-05-26 | 现场研发3 | 32h |

| ID | WBS | Task | Duration | Start | Finish | Predecessors | Baseline start | Baseline finish | Baseline duration | Constraint | Resources | Work |
| --- | --- | --- | --- | --- | --- | --- | --- | --- | --- | --- | --- | --- |
| 134 | 5 | **与信云智交互过程开发** | 20d | 2017-06-01 | 2017-06-28 |  | 2017-06-01 | 2017-06-21 | 15d | start no earlier than 2017-06-01 |  | 160h |
| 135 | 5.1 | **提供REST API供信云智调用来获取服务列表** | 5d | 2017-06-01 | 2017-06-07 |  | 2017-06-01 | 2017-06-07 | 5d | start no earlier than 2017-05-25 |  | 40h |
| 136 | 5.1.1 | REST API接口设计 | 2d | 2017-06-01 | 2017-06-02 |  |  |  |  | start no earlier than 2017-05-26 | 现场研发4 | 16h |
| 137 | 5.1.2 | REST API实现 | 3d | 2017-06-05 | 2017-06-07 | 136 |  |  |  | start no earlier than 2017-05-26 | 现场研发4 | 24h |
| 138 | 5.2 | **提供REST API供信云智创建租户** | 5d | 2017-06-08 | 2017-06-14 | 135 | 2017-06-08 | 2017-06-21 | 10d | start no earlier than 2017-05-25 |  | 40h |
| 139 | 5.2.1 | REST API接口设计 | 2d | 2017-06-08 | 2017-06-09 |  |  |  |  | start no earlier than 2017-05-26 | 现场研发4 | 16h |
| 140 | 5.2.2 | REST API实现 | 3d | 2017-06-12 | 2017-06-14 | 139 |  |  |  | start no earlier than 2017-05-26 | 现场研发4 | 24h |
| 141 | 5.3 | **提供REST API供信云智查询租户** | 5d | 2017-06-15 | 2017-06-21 | 138 |  |  |  | start no earlier than 2017-05-26 |  | 40h |
| 142 | 5.3.1 | REST API接口设计 | 2d | 2017-06-15 | 2017-06-16 |  |  |  |  | start no earlier than 2017-05-26 | 现场研发4 | 16h |
| 143 | 5.3.2 | REST API实现 | 3d | 2017-06-19 | 2017-06-21 | 142 |  |  |  | start no earlier than 2017-05-26 | 现场研发4 | 24h |
| 144 | 5.4 | **提供REST API供信云智修改租户** | 5d | 2017-06-22 | 2017-06-28 | 131, 141 | 2017-06-08 | 2017-06-14 | 5d | start no earlier than 2017-05-25 |  | 40h |
| 145 | 5.4.1 | REST API接口设计 | 2d | 2017-06-22 | 2017-06-23 |  |  |  |  | start no earlier than 2017-05-26 | 现场研发4 | 16h |
| 146 | 5.4.2 | REST API实现 | 3d | 2017-06-26 | 2017-06-28 | 145 |  |  |  | start no earlier than 2017-05-26 | 现场研发4 | 24h |
